Schedule from MS Project, 2015-03-02 to 2015-08-31, A marks actual dates.

## Calendars

- Standard: Mon-Fri 08:00-12:00, 13:00-17:00; Sat-Sun off.

## Resources

| Resource |
| --- |
| Brent |
| Matt |
| Wolff |
| Loutoo |

## Schedule

| ID | WBS | Task | Type | Duration | Start | Finish | Predecessors | Complete | Remaining | Total slack | Resources | Work | Actual work |
| --- | --- | --- | --- | --- | --- | --- | --- | --- | --- | --- | --- | --- | --- |
| 1 | 1 | Sub-System Design | manual | 22d | 2015-03-02 A | 2015-03-31 A |  | 100% |  |  | Wolff | 176h | 176h |
| 2 | 2 | SSDD | milestone, manual | 0d | 2015-04-08 A | 2015-04-08 A |  | 100% |  |  | Wolff |  |  |
| 3 | 3 | Sofware Detailed Design | manual | 37d | 2015-04-02 A | 2015-05-22 A |  | 100% |  |  | Wolff | 296h | 296h |
| 4 | 4 | SDD | milestone, manual | 0d | 2015-05-26 A | 2015-05-26 A |  | 100% |  |  | Wolff |  |  |
| 5 | 5 | Development Platform | manual | 4d | 2015-05-27 A | 2015-06-01 A |  | 100% |  |  | Matt; Wolff; Brent | 96h | 96h |
| 7 | 6 | **Database** |  | 21.9d | 2015-06-02 A | 2015-07-01 | 5 | 63% | 8.06d | 0d | Brent | 351.2h | 188.11h |
| 8 | 6.1 | Sprint 1A - Database (MySQL) | manual | 5d | 2015-06-02 A | 2015-06-08 A |  | 100% |  |  | Brent | 40h | 40h |
| 9 | 6.2 | Sprint 2A - Database (ALDB) | manual | 5d | 2015-06-09 A | 2015-06-15 A | 8 | 100% |  |  | Brent | 40h | 40h |
| 10 | 6.3 | Sprint 3A - Database (Status) | manual | 5d | 2015-06-16 A | 2015-06-22 | 9 | 50% | 2.5d |  | Brent | 40h | 20h |
| 11 | 6.4 | Sprint 4A - Database (ReDa Interface) | manual | 7d | 2015-06-02 A | 2015-07-01 | 10 | 20% | 5.6d |  | Brent | 56h | 11.2h |
| 13 | 7 | **Test Cases** |  | 24d | 2015-06-02 A | 2015-07-03 A | 5 | 100% |  |  | Matt | 672h | 672h |
| 14 | 7.1 | Sprint 1B - Test Cases (Selenium) | manual | 5d | 2015-06-02 A | 2015-06-08 A |  | 100% |  |  | Matt | 40h | 40h |
| 15 | 7.2 | Sprint 2B - Test Cases (ALGUI) | manual | 5d | 2015-06-09 A | 2015-06-15 A | 14 | 100% |  |  | Matt | 40h | 40h |
| 16 | 7.3 | Sprint 3B - Test Cases (MAPBUN INIT/CONF) | manual | 4d | 2015-06-16 A | 2015-06-19 A | 15 | 100% |  |  | Matt | 32h | 32h |
| 17 | 7.4 | Sprint 4B - Test Cases (ALAM) | manual | 2d | 2015-06-22 A | 2015-06-23 A | 16 | 100% |  |  | Matt | 16h | 16h |
| 18 | 7.5 | Sprint 5B - Test Cases (MAPBUN-B) | manual | 8d | 2015-06-24 A | 2015-07-03 A | 17 | 100% |  |  | Matt; Wolff | 128h | 128h |
| 20 | 7.6 | **Test GUI** |  | 12d | 2015-06-02 A | 2015-06-17 A | 5 | 100% |  |  | Wolff | 224h | 224h |
| 21 | 7.6.1 | Sprint 1C - Test GUI (Apache) | manual | 2d | 2015-06-02 A | 2015-06-03 A |  | 100% |  |  | Wolff; Brent | 32h | 32h |
| 22 | 7.6.2 | Sprint 2C - Test GUI (HTML) | manual | 2d | 2015-06-04 A | 2015-06-05 A | 21 | 100% |  |  | Wolff; Brent | 32h | 32h |
| 23 | 7.6.3 | Sprint 3C - Test GUI (PY/PHP) | manual | 8d | 2015-06-08 A | 2015-06-17 A | 22 | 100% |  |  | Brent | 64h | 64h |
| 25 | 8 | Sprint 3D - Matlab on Linux | manual | 6d | 2015-06-22 A | 2015-06-29 A |  | 100% |  |  | Matt | 48h | 48h |
| 26 | 9 | Sprint 6 - Coordinates Optimization | manual | 5d | 2015-06-30 A | 2015-07-06 A | 25 | 100% |  |  | Matt | 40h | 40h |
| 27 | 10 | Sprint 7 - Coordinates Atlas (MATLAB) | manual | 4d | 2015-07-13 A | 2015-07-16 A | 26 | 100% |  |  | Matt | 32h | 32h |
| 28 | 11 | Sprint 8 - TermLink SSH | manual | 5d | 2015-07-21 A | 2015-07-27 A |  | 100% |  |  | Brent; Loutoo; Wolff | 120h | 120h |
| 29 | 12 | Sprint 9 - IF Path | manual | 5d | 2015-07-23 A | 2015-07-29 A |  | 100% |  |  | Matt; Wolff | 80h | 80h |
| 30 | 13 | Sprint 10 - Optimization | manual | 5d | 2015-07-28 A | 2015-08-03 A |  | 100% |  |  | Brent; Matt; Wolff | 120h | 120h |
| 31 | 14 | Sprint 11 - Bug Fixes | manual | 5d | 2015-08-11 A | 2015-08-17 A |  | 100% |  |  | Brent; Matt; Wolff | 120h | 120h |
| 32 | 15 | Sprint 12 - Prototyping for NMS PM | manual | 20d | 2015-07-28 A | 2015-08-24 A | 28 | 100% |  |  | Loutoo; Matt | 320h | 320h |
| 33 | 16 | Sprint 13 - Final Doc & Baseline | manual | 5d | 2015-08-25 A | 2015-08-31 A |  | 100% |  |  | Matt; Wolff | 80h | 80h |
